# 小Q智联APP V2.0

Schedule from a web Gantt chart, 2024-07-12 to 2024-10-08.
Saturdays and Sundays are off

## Schedule

| ID | WBS | Task | Duration | Start | Finish | Predecessors | inPeople | Status |
| --- | --- | --- | --- | --- | --- | --- | --- | --- |
| 2 | 1 | **设计** | 25d | 2024-07-12 | 2024-08-15 |  |  |  |
| 3 | 1.1 | UI、表结构设计与后台框架整理 | 3d | 2024-07-12 | 2024-07-16 |  |  |  |
| 4 | 2 | **学校场景** | 27d | 2024-07-17 | 2024-08-22 |  |  |  |
| 5 | 2.1 | 员工管理 | 4d | 2024-07-17 | 2024-07-22 | 3 | 邓振祥、陈泽强 | waiting |
| 6 | 2.2 | 学生管理 | 4d | 2024-07-23 | 2024-07-26 | 5 | 邓振祥、陈泽强 | waiting |
| 7 | 2.3 | 设备管理 | 2d | 2024-07-29 | 2024-07-30 | 6 | 邓振祥、陈泽强 | waiting |
| 8 | 2.4 | 通行时间 | 3d | 2024-07-31 | 2024-08-02 | 7 | 邓振祥、陈泽强 | waiting |
| 9 | 2.5 | 通行规则 | 3d | 2024-08-05 | 2024-08-07 | 8 | 邓振祥、陈泽强 | waiting |
| 10 | 2.6 | 首页处理 | 2d | 2024-08-08 | 2024-08-09 | 9 | 邓振祥、陈泽强 | waiting |
| 11 | 2.7 | 支付相关 | 4d | 2024-08-12 | 2024-08-15 | 10 | 邓振祥、陈泽强 | waiting |
| 12 | 2.8 | 联调与测试 | 5d | 2024-08-16 | 2024-08-22 | 11 | 邓振祥、陈泽强、李南 | waiting |
| 13 | 3 | **社区场景** | 21d | 2024-08-23 | 2024-09-20 |  |  |  |
| 14 | 3.1 | 房屋管理 | 4d | 2024-08-23 | 2024-08-28 | 12 | 邓振祥、陈泽强 | waiting |
| 15 | 3.2 | 员工管理 | 3d | 2024-08-29 | 2024-09-02 | 14 | 邓振祥、陈泽强 | waiting |
| 16 | 3.3 | 住户管理 | 3d | 2024-09-03 | 2024-09-05 | 15 | 邓振祥、陈泽强 | waiting |
| 17 | 3.4 | 设备管理 | 1d | 2024-09-06 | 2024-09-06 | 16 | 邓振祥、陈泽强 | waiting |
| 18 | 3.5 | 通行时间 | 2d | 2024-09-09 | 2024-09-10 | 17 | 邓振祥、陈泽强 | waiting |
| 19 | 3.6 | 通行规则 | 2d | 2024-09-11 | 2024-09-12 | 18 | 邓振祥、陈泽强 | waiting |
| 20 | 3.7 | 首页处理 | 1d | 2024-09-13 | 2024-09-13 | 19 | 邓振祥、陈泽强 | waiting |
| 21 | 3.8 | 联调与测试 | 5d | 2024-09-16 | 2024-09-20 | 20 | 邓振祥、陈泽强、李南 | waiting |
| 22 | 4 | **通用场景** | 10d | 2024-09-23 | 2024-10-04 |  |  |  |
| 23 | 4.1 | 人员管理 | 1d | 2024-09-23 | 2024-09-23 | 21 | 邓振祥、陈泽强 | waiting |
| 24 | 4.2 | 设备管理 | 1d | 2024-09-24 | 2024-09-24 | 23 | 邓振祥、陈泽强 | waiting |
| 25 | 4.3 | 通行时间 | 1d | 2024-09-25 | 2024-09-25 | 24 | 邓振祥、陈泽强 | waiting |
| 26 | 4.4 | 通行规则 | 1d | 2024-09-26 | 2024-09-26 | 25 | 邓振祥、陈泽强 | waiting |
| 27 | 4.5 | 首页处理 | 1d | 2024-09-27 | 2024-09-27 | 26 | 邓振祥、陈泽强 | waiting |
| 28 | 4.6 | 联调与测试 | 5d | 2024-09-30 | 2024-10-04 | 27 | 邓振祥、陈泽强、李南 | waiting |

| ID | WBS | Task | Duration | Start | Finish | Predecessors | inPeople | Status |
| --- | --- | --- | --- | --- | --- | --- | --- | --- |
| 29 | 5 | **整体测试与BUG修复** | 1d | 2024-10-07 | 2024-10-07 |  | 邓振祥、陈泽强、李南 |  |
| 30 | 5.1 | 第一轮测试与BUG修复 | 1d | 2024-10-07 | 2024-10-07 | 28 |  | waiting |
| 31 | 5.2 | 第二轮测试与BUG修复 | 1d | 2024-10-07 | 2024-10-07 |  |  |  |
| 32 | 5.3 | 第三轮测试与BUG修复 | 1d | 2024-10-07 | 2024-10-07 |  |  |  |
| 33 | 6 | 生产环境发布 | 1d | 2024-10-08 | 2024-10-08 | 29 | 邓振祥、陈泽强 | waiting |
